# 3.4课堂状态实时分析系统估算持续时间

Schedule from MS Project, 2020-11-09 to 2020-12-18.
Microsoft

## Calendars

- 标准: Mon-Fri 08:00-12:00, 13:00-17:00; Sat-Sun off.

## Resources

| Resource |
| --- |
| 项目经理_李洪磊 |
| 产品经理_刘震昆 |
| 技术专家_许一帆 |
| UI设计师_刘震昆 |
| 测试专家_许一帆 |
| 需求专家_李洪磊 |
| 设计专家_刘震昆 |
| 程序员1（刘震昆） |
| 程序员3（许一帆） |
| 程序员2（李洪磊） |
| 测试员1（刘震昆） |
| 测试员2（李洪磊） |

## Schedule

| ID | WBS | Task | Type | Duration | Start | Finish | Predecessors | Total slack | Free slack | Resources | Work |
| --- | --- | --- | --- | --- | --- | --- | --- | --- | --- | --- | --- |
| 1 | 1 | **启动** |  | 3d | 2020-11-09 | 2020-11-12 |  |  |  |  | 112h |
| 2 | 1.1 | 组建核心团队 | manual | 1d | 2020-11-09 | 2020-11-10 |  |  |  | 项目经理_李洪磊; 产品经理_刘震昆; 技术专家_许一帆; UI设计师_刘震昆; 测试专家_许一帆 | 40h |
| 3 | 1.2 | 干系人分析 | manual | 1d | 2020-11-09 | 2020-11-10 |  |  |  | 项目经理_李洪磊 | 8h |
| 4 | 1.3 | 里程碑计划 | manual | 1d | 2020-11-09 | 2020-11-10 |  |  |  | 项目经理_李洪磊 | 8h |
| 5 | 1.4 | 制定项目章程 | manual | 1d | 2020-11-10 | 2020-11-11 | 2, 3, 4 |  |  | 项目经理_李洪磊 | 8h |
| 6 | 1.5 | 项目启动大会 | manual | 1d | 2020-11-11 | 2020-11-12 | 5 |  |  | UI设计师_刘震昆; 测试专家_许一帆; 产品经理_刘震昆; 技术专家_许一帆; 项目经理_李洪磊; 需求专家_李洪磊 | 48h |
| 7 | 2 | **规划** |  | 18d | 2020-11-12 | 2020-12-08 |  | 0.88d | 0d |  | 224h |
| 8 | 2.1 | **规划范围** |  | 5d | 2020-11-12 | 2020-11-19 |  | 0.88d |  |  | 64h |
| 9 | 2.1.1 | 制定需求说明书 |  | 1d | 2020-11-12 | 2020-11-13 | 6 | 0.88d | 0d | 需求专家_李洪磊 | 8h |
| 10 | 2.1.2 | 界面设计 |  | 2d | 2020-11-13 | 2020-11-17 | 9 | 0.88d | 0d | UI设计师_刘震昆 | 16h |
| 11 | 2.1.3 | 详细设计说明书 |  | 1d | 2020-11-13 | 2020-11-16 | 9 | 1.88d | 1d | UI设计师_刘震昆 | 8h |
| 12 | 2.1.4 | 项目范围说明书 |  | 1d | 2020-11-13 | 2020-11-16 | 9 | 1.88d | 1d | 项目经理_李洪磊 | 8h |
| 13 | 2.1.5 | 创建WBS |  | 1d | 2020-11-17 | 2020-11-18 | 10, 11, 12 | 0.88d | 0d | 项目经理_李洪磊; UI设计师_刘震昆 | 16h |
| 14 | 2.1.6 | 形成范围基准 |  | 1d | 2020-11-18 | 2020-11-19 | 13 | 0.88d | 0d | 项目经理_李洪磊 | 8h |
| 15 | 2.2 | **规划时间** |  | 6d | 2020-11-19 | 2020-11-27 |  | 0.88d |  |  | 48h |
| 16 | 2.2.1 | 排列工作包顺序 |  | 2d | 2020-11-19 | 2020-11-23 | 14 | 0.88d | 0d | 项目经理_李洪磊 | 16h |
| 17 | 2.2.2 | 估算资源 |  | 1d | 2020-11-23 | 2020-11-24 | 16 | 0.88d | 0d | 项目经理_李洪磊 | 8h |
| 18 | 2.2.3 | 估算持续时间 |  | 1d | 2020-11-24 | 2020-11-25 | 17 | 0.88d | 0d | 项目经理_李洪磊 | 8h |
| 19 | 2.2.4 | 制定进度计划 |  | 1d | 2020-11-25 | 2020-11-26 | 18 | 0.88d | 0d | 项目经理_李洪磊 | 8h |
| 20 | 2.2.5 | 形成进度基准 |  | 1d | 2020-11-26 | 2020-11-27 | 19 | 0.88d | 0d | 项目经理_李洪磊 | 8h |
| 21 | 2.3 | **规划成本** |  | 3d | 2020-11-27 | 2020-12-02 |  | 0.88d | 0d |  | 24h |
| 22 | 2.3.1 | 项目成本估算 |  | 1d | 2020-11-27 | 2020-11-30 | 20 | 0.88d | 0d | 项目经理_李洪磊 | 8h |
| 23 | 2.3.2 | 项目预算 |  | 1d | 2020-11-30 | 2020-12-01 | 22 | 0.88d | 0d | 项目经理_李洪磊 | 8h |
| 24 | 2.3.3 | 形成范围基准 |  | 1d | 2020-12-01 | 2020-12-02 | 23 | 0.88d |  | 项目经理_李洪磊 | 8h |

| ID | WBS | Task | Duration | Start | Finish | Predecessors | Total slack | Free slack | Constraint | Resources | Work |
| --- | --- | --- | --- | --- | --- | --- | --- | --- | --- | --- | --- |
| 25 | 2.4 | **规划质量** | 2d | 2020-11-19 | 2020-11-23 |  | 7.88d | 7d |  |  | 16h |
| 26 | 2.4.1 | 制定测试计划 | 1d | 2020-11-19 | 2020-11-20 | 14 | 7.88d | 0d |  | 测试专家_许一帆 | 8h |
| 27 | 2.4.2 | 制定测试用例 | 1d | 2020-11-20 | 2020-11-23 | 26 | 7.88d |  |  | 测试专家_许一帆 | 8h |
| 28 | 2.5 | **规划人力资源** | 2d | 2020-11-24 | 2020-11-26 |  | 4.88d | 4d |  |  | 16h |
| 29 | 2.5.1 | 制定人力资源计划 | 1d | 2020-11-24 | 2020-11-25 | 17 | 4.88d | 0d |  | 项目经理_李洪磊 | 8h |
| 30 | 2.5.2 | 制定人员配备管理计划 | 1d | 2020-11-25 | 2020-11-26 | 29 | 4.88d | 0d |  | 项目经理_李洪磊 | 8h |
| 31 | 2.6 | **规划沟通** | 1d | 2020-11-26 | 2020-11-27 |  | 7.88d |  |  |  | 8h |
| 32 | 2.6.1 | 制定沟通管理计划 | 1d | 2020-11-26 | 2020-11-27 | 30 | 7.88d |  |  | 项目经理_李洪磊 | 8h |
| 33 | 2.7 | **规划采购** | 2d | 2020-11-24 | 2020-11-26 |  | 8.88d |  |  |  | 16h |
| 34 | 2.7.1 | 自制外购分析 | 1d | 2020-11-24 | 2020-11-25 | 17 | 8.88d | 0d |  | 项目经理_李洪磊 | 8h |
| 35 | 2.7.2 | 制定采购文件 | 1d | 2020-11-25 | 2020-11-26 | 34 | 8.88d |  |  | 项目经理_李洪磊 | 8h |
| 36 | 2.8 | **规划风险** | 4d | 2020-12-02 | 2020-12-08 |  | 0.88d |  |  |  | 32h |
| 37 | 2.8.1 | 识别风险 | 1d | 2020-12-02 | 2020-12-03 | 15, 21, 25, 28 | 0.88d | 0d | start no earlier than 2020-11-21 | 项目经理_李洪磊 | 8h |
| 38 | 2.8.2 | 风险分析 | 1d | 2020-12-03 | 2020-12-04 | 37 | 0.88d | 0d | start no earlier than 2020-11-22 | 项目经理_李洪磊 | 8h |
| 39 | 2.8.3 | 制定风险登记册 | 1d | 2020-12-04 | 2020-12-07 | 38 | 0.88d | 0d | start no earlier than 2020-11-23 | 项目经理_李洪磊 | 8h |
| 40 | 2.8.4 | 规划整合 | 1d | 2020-12-07 | 2020-12-08 | 39 | 0.88d |  | start no earlier than 2020-11-24 | 项目经理_李洪磊 | 8h |
| 41 | 3 | **执行与监控** | 21d | 2020-11-16 | 2020-12-14 |  |  |  |  |  | 736h |
| 42 | 3.1 | 组建项目团队 | 1d | 2020-12-08 | 2020-12-09 | 7 | 0.88d | 0d | start no earlier than 2020-11-25 | 项目经理_李洪磊; UI设计师_刘震昆; 测试员1（刘震昆）; 测试员2（李洪磊）; 测试专家_许一帆; 产品经理_刘震昆; 程序员1（刘震昆）; 程序员3（许一帆）; 程序员2（李洪磊）; 技术专家_许一帆; 设计专家_刘震昆 | 88h |
| 43 | 3.2 | **项目执行** | 18d | 2020-11-16 | 2020-12-09 |  | 0d |  |  |  | 368h |
| 44 | 3.2.1 | **人脸数据录入模块** | 7d | 2020-11-16 | 2020-11-24 |  | 0d |  |  |  | 96h |
| 45 | 3.2.1.1 | 创建与保存数据 | 6d | 2020-11-16 | 2020-11-23 |  | 0d |  |  | 程序员1（刘震昆） | 48h |
| 46 | 3.2.1.2 | 框出人脸区域 | 1d | 2020-11-16 | 2020-11-16 |  | 5d |  |  | 程序员1（刘震昆）; 程序员2（李洪磊） | 16h |
| 47 | 3.2.1.3 | 镜像处理 | 1d | 2020-11-24 | 2020-11-24 | 45, 46 | 0d |  |  | 程序员1（刘震昆） | 8h |
| 48 | 3.2.1.4 | 噪声处理 | 1d | 2020-11-24 | 2020-11-24 | 45, 46 | 0d |  |  | 程序员1（刘震昆） | 8h |
| 49 | 3.2.1.5 | 模糊处理 | 1d | 2020-11-24 | 2020-11-24 | 45, 46 | 0d |  |  | 程序员3（许一帆）; 程序员1（刘震昆） | 16h |

| ID | WBS | Task | Duration | Start | Finish | Predecessors | Total slack | Free slack | Constraint | Resources | Work |
| --- | --- | --- | --- | --- | --- | --- | --- | --- | --- | --- | --- |
| 50 | 3.2.2 | **人脸识别模块** | 18d | 2020-11-16 | 2020-12-09 |  | 0d |  |  |  | 168h |
| 51 | 3.2.2.1 | 人脸侦测 | 6d | 2020-11-16 | 2020-11-23 |  | 12d |  |  | 程序员3（许一帆） | 48h |
| 52 | 3.2.2.2 | 人脸数据导入 | 1d | 2020-11-25 | 2020-11-25 | 49, 48, 47 | 0d |  |  | 程序员1（刘震昆）; 程序员3（许一帆） | 16h |
| 53 | 3.2.2.3 | 人脸相似度对比 | 10d | 2020-11-26 | 2020-12-09 | 52 | 0d |  |  | 程序员3（许一帆） | 80h |
| 54 | 3.2.2.4 | 签到情况 | 2d | 2020-11-16 | 2020-11-17 |  | 15d | 0d |  | 程序员3（许一帆） | 16h |
| 55 | 3.2.2.5 | 签到导出 | 1d | 2020-11-18 | 2020-11-18 | 54 | 15d |  |  | 程序员3（许一帆） | 8h |
| 56 | 3.2.3 | **情绪分析与疲劳检测模块** | 4d | 2020-11-16 | 2020-11-19 |  | 14d |  |  |  | 48h |
| 57 | 3.2.3.1 | 构建人脸关键点 | 1d | 2020-11-16 | 2020-11-16 |  | 14d | 0d |  | 程序员1（刘震昆）; 程序员2（李洪磊） | 16h |
| 58 | 3.2.3.2 | 分析表情的分类 | 1d | 2020-11-17 | 2020-11-17 | 57 | 14d | 0d |  | 程序员2（李洪磊） | 8h |
| 59 | 3.2.3.3 | 面部情绪检测 | 1d | 2020-11-18 | 2020-11-18 | 58 | 14d | 0d |  | 程序员2（李洪磊） | 8h |
| 60 | 3.2.3.4 | 眼睛疲劳状态检测 | 1d | 2020-11-18 | 2020-11-18 | 58 | 14d | 0d |  | 程序员2（李洪磊） | 8h |
| 61 | 3.2.3.5 | 瞌睡状态提示 | 1d | 2020-11-19 | 2020-11-19 | 60, 59 | 14d |  |  | 程序员2（李洪磊） | 8h |
| 62 | 3.2.4 | **UI界面模块** | 2d | 2020-11-16 | 2020-11-17 |  | 16d |  |  |  | 56h |
| 63 | 3.2.4.1 | 构建界面 | 1d | 2020-11-16 | 2020-11-16 |  | 16d | 0d |  | 程序员1（刘震昆）; 程序员3（许一帆） | 16h |
| 64 | 3.2.4.2 | 美化界面 | 1d | 2020-11-17 | 2020-11-17 | 63 | 16d |  |  | 程序员3（许一帆）; 程序员2（李洪磊） | 16h |
| 65 | 3.2.4.3 | 代码整合 | 1d | 2020-11-17 | 2020-11-17 | 63 | 16d |  |  | 程序员1（刘震昆）; 程序员3（许一帆）; 程序员2（李洪磊） | 24h |
| 66 | 3.3 | **项目监控** | 3d | 2020-12-09 | 2020-12-14 |  | 0.88d |  |  |  | 120h |
| 67 | 3.3.1 | 各项指标监控 | 1d | 2020-12-09 | 2020-12-10 | 42 | 0.88d | 0d | start no earlier than 2020-11-26 | 测试员1（刘震昆）; 项目经理_李洪磊 | 16h |
| 68 | 3.3.2 | 监控评审 | 1d | 2020-12-10 | 2020-12-11 | 67 | 0.88d | 0d | start no earlier than 2020-11-27 | UI设计师_刘震昆; 项目经理_李洪磊 | 16h |
| 69 | 3.3.3 | 变更评审 | 1d | 2020-12-11 | 2020-12-14 | 68 | 4.88d |  | start no earlier than 2020-11-28 | UI设计师_刘震昆; 项目经理_李洪磊 | 16h |
| 70 | 3.3.4 | 例会 | 1d | 2020-12-09 | 2020-12-10 | 42 | 6.88d |  | start no earlier than 2020-11-26 | UI设计师_刘震昆; 项目经理_李洪磊; 测试员1（刘震昆）; 测试专家_许一帆; 产品经理_刘震昆; 程序员1（刘震昆）; 程序员3（许一帆）; 程序员2（李洪磊）; 技术专家_许一帆 | 72h |
| 71 | 3.4 | **管理干系人** | 1d | 2020-12-09 | 2020-12-10 |  | 2.88d |  |  |  | 24h |
| 72 | 3.4.1 | 发布项目信息 | 1d | 2020-12-09 | 2020-12-10 | 42 | 6.88d |  | start no earlier than 2020-11-26 | 项目经理_李洪磊 | 8h |
| 73 | 3.4.2 | 报告监控指标 | 1d | 2020-12-09 | 2020-12-10 | 42 | 6.88d |  |  | 项目经理_李洪磊 | 8h |
| 74 | 3.4.3 | 干系人沟通 | 1d | 2020-12-09 | 2020-12-10 | 42 | 6.88d |  |  | 项目经理_李洪磊 | 8h |

| ID | WBS | Task | Type | Duration | Start | Finish | Predecessors | Total slack | Resources | Work |
| --- | --- | --- | --- | --- | --- | --- | --- | --- | --- | --- |
| 75 | 3.5 | **团队建设** |  | 2d | 2020-12-09 | 2020-12-11 |  | 1.88d |  | 96h |
| 76 | 3.5.1 | 培训 |  | 2d | 2020-12-09 | 2020-12-11 | 42 | 5.88d | UI设计师_刘震昆; 测试员1（刘震昆）; 测试员2（李洪磊） | 48h |
| 77 | 3.5.2 | 娱乐活动 |  | 1d | 2020-12-09 | 2020-12-10 | 42 | 6.88d | UI设计师_刘震昆; 测试员1（刘震昆）; 测试员2（李洪磊） | 24h |
| 78 | 3.5.3 | 沟通 |  | 1d | 2020-12-09 | 2020-12-10 | 42 | 6.88d | UI设计师_刘震昆; 测试员1（刘震昆）; 测试员2（李洪磊） | 24h |
| 79 | 3.6 | 采购 |  | 1d | 2020-12-09 | 2020-12-10 | 42 | 6.88d | 项目经理_李洪磊 | 8h |
| 80 | 3.7 | 项目验收 |  | 1d | 2020-12-10 | 2020-12-10 | 43 | 0d | UI设计师_刘震昆; 测试员1（刘震昆）; 测试员2（李洪磊）; 设计专家_刘震昆 | 32h |
| 81 | 4 | **收尾** |  | 6d | 2020-12-11 | 2020-12-18 |  |  |  | 264h |
| 82 | 4.1 | 项目终验 | manual | 2d | 2020-12-11 | 2020-12-14 | 80 |  | UI设计师_刘震昆; 测试员1（刘震昆）; 测试员2（李洪磊）; 设计专家_刘震昆 | 64h |
| 83 | 4.2 | 结束采购 | manual | 1d | 2020-12-11 | 2020-12-11 | 80 |  | 项目经理_李洪磊 | 8h |
| 84 | 4.3 | 项目内部收尾 | manual | 6d | 2020-12-11 | 2020-12-18 | 80 |  | UI设计师_刘震昆; 测试员1（刘震昆）; 测试员2（李洪磊）; 设计专家_刘震昆 | 192h |
